# Moneyhub Server

Schedule from MS Project, 2010-07-21 to 2010-08-02.

## Calendars

- Standard: Mon-Fri 08:00-12:00, 13:00-17:00; Sat-Sun off.

## Resources

| Resource |
| --- |
| 张迪 |
| 张京 |
| 秦培姣 |
| 曹皎洁 |
| 李兴武 |

## Schedule

| ID | WBS | Task | Duration | Start | Finish | Predecessors | Total slack | Free slack | Resources | Work |
| --- | --- | --- | --- | --- | --- | --- | --- | --- | --- | --- |
| 1 | 1 | **计划** | 2.5d | 2010-07-21 | 2010-07-23 |  | 0d |  |  | 34h |
| 2 | 1.1 | Kickoff会议 | 2h | 2010-07-21 | 2010-07-21 |  | 0d |  | 张京; 曹皎洁; 李兴武; 张迪; 秦培姣 | 10h |
| 3 | 1.2 | 软件项目管理计划 | 2d | 2010-07-21 | 2010-07-23 | 2 | 1.5d | 0d | 张京 | 16h |
| 4 | 1.3 | 软件项目管理计划评审 | 2h | 2010-07-23 | 2010-07-23 | 3 | 1.5d | 0d | 张京; 张迪; 秦培姣; 李兴武; 曹皎洁 | 8h |
| 5 | 2 | **设计** | 1.25d | 2010-07-21 | 2010-07-22 |  | 0d |  |  | 12h |
| 6 | 2.1 | 设计文档 | 1d | 2010-07-21 | 2010-07-22 | 2 | 0d |  | 张迪 | 8h |
| 7 | 2.2 | 设计文档评审 | 2h | 2010-07-22 | 2010-07-22 | 6 | 0d |  | 张迪; 张京; 秦培姣 | 4h |
| 8 | 3 | **代码开发** | 4.5d? | 2010-07-22 | 2010-07-28 | 5 | 0d |  |  | 72h |
| 9 | 3.1 | **HTML代码** | 3.25d? | 2010-07-22 | 2010-07-27 | 5 | 0d |  |  | 24h |
| 10 | 3.1.1 | 主页 | 1d? | 2010-07-23 | 2010-07-26 | 7 | 1.75d | 0d | 秦培姣 | 8h |
| 11 | 3.1.2 | FAQ页 | 1d? | 2010-07-22 | 2010-07-23 | 7 | 0d |  | 秦培姣 | 8h |
| 12 | 3.1.3 | 问题反馈页 | 1d? | 2010-07-26 | 2010-07-27 | 7 | 0.75d | 0d | 秦培姣 | 8h |
| 13 | 3.2 | **PHP代码** | 4.5d? | 2010-07-22 | 2010-07-28 | 5 | 0d |  |  | 48h |
| 14 | 3.2.1 | 主页 | 4h | 2010-07-26 | 2010-07-27 | 10 | 1.75d |  | 张迪 | 4h |
| 15 | 3.2.2 | 升级系统 | 1d? | 2010-07-22 | 2010-07-27 | 7 | 1.25d |  | 张迪 | 8h |
| 16 | 3.2.3 | FAQ系统 | 2d | 2010-07-23 | 2010-07-28 | 11 | 0d |  | 张迪 | 16h |
| 17 | 3.2.4 | 问题反馈系统 | 4h | 2010-07-27 | 2010-07-28 | 12 | 0.75d |  | 张迪 | 4h |
| 18 | 3.2.5 | 广告系统 | 2d | 2010-07-23 | 2010-07-27 | 4 | 1.5d |  | 张京 | 16h |
| 19 | 4 | **测试** | 8.75d? | 2010-07-21 | 2010-08-02 | 2 | 0d |  |  | 48h |
| 20 | 4.1 | 测试用例编写 | 2d | 2010-07-21 | 2010-07-23 | 2 | 2.75d | 0d | 曹皎洁 | 16h |
| 21 | 4.2 | 测试环境搭建 | 1d? | 2010-07-23 | 2010-07-26 | 20 | 2.5d |  | 曹皎洁 | 8h |
| 22 | 4.3 | 测试执行 | 1d? | 2010-07-29 | 2010-07-29 | 21, 8, 20 | 0d |  | 曹皎洁 | 8h |
| 23 | 4.4 | BUG修复 | 2d | 2010-07-30 | 2010-08-02 | 22 | 0d |  | 张迪 | 16h |
| 24 | 5 | **IT** | 2d? | 2010-07-21 | 2010-07-23 | 2 | 6.75d |  |  | 16h |
| 25 | 5.1 | 服务器搭建 | 1d? | 2010-07-22 | 2010-07-23 | 26 | 6.75d |  | 李兴武 | 8h |
| 26 | 5.2 | SVN搭建 | 4h | 2010-07-21 | 2010-07-22 | 27 | 6.75d | 0d | 李兴武 | 4h |
| 27 | 5.3 | BUGZILLA搭建 | 4h | 2010-07-21 | 2010-07-21 | 2 | 6.75d | 0d | 李兴武 | 4h |
